# Neues Produkt

Schedule from MS Project, 2013-10-01 to 2018-06-28.

## Calendars

- Standard: Mon-Fri 08:00-12:00, 13:00-17:00; Sat-Sun off.

## Resources

| Resource |
| --- |
| Management |
| Fertigungsabteilung |
| Rechtsabteilung |
| Marketingabteilung |
| Projektmanager |
| Fertigungsplaner |
| Fertigungsingenieur |
| Sicherheitsprüfer |
| Buchhaltung |
| Kunde |
| Einkaufsabteilung |
| Managemen |

## Schedule

| ID | WBS | Task | Type | Duration | Start | Finish | Predecessors | Total slack | Resources | Work |
| --- | --- | --- | --- | --- | --- | --- | --- | --- | --- | --- |
| 1 | 1 | **Entwicklung eines neuen Produkts - Projektvorlage** |  | 1237.75d | 2013-10-01 | 2018-06-28 |  | 0d |  | 14272h |
| 2 | 1.1 | **Prüfphase für das neue Produkt** |  | 9d | 2013-10-01 | 2013-10-11 |  | 0d |  | 72h |
| 3 | 1.1.1 | Chancen für das neue Produkt erkannt | milestone | 0d | 2013-10-01 | 2013-10-01 |  | 0d | Management |  |
| 4 | 1.1.2 | Beschreiben der Idee des neuen Produkts (schriftliche Fassung auf 1 Seite) |  | 2d | 2013-10-01 | 2013-10-02 | 3 | 0d | Fertigungsabteilung | 16h |
| 5 | 1.1.3 | Sammeln von Informationen, die für die Entscheidung (ja/nein) erforderlich sind |  | 6d | 2013-10-03 | 2013-10-10 | 4 | 0d | Fertigungsabteilung | 48h |
| 6 | 1.1.4 | Einberufen eines Prüfgremiums (Entscheidung über Realisierung) |  | 1d | 2013-10-11 | 2013-10-11 | 5 | 0d | Fertigungsabteilung | 8h |
| 7 | 1.1.5 | Entscheidungspunkt - Ja/Nein für Voruntersuchungen | milestone | 0d | 2013-10-11 | 2013-10-11 | 6 | 0d | Management |  |
| 8 | 1.2 | **Voruntersuchungsphase** |  | 68.5d | 2013-10-14 | 2014-01-16 |  | 0d |  | 1188h |
| 9 | 1.2.1 | Zuordnen von Ressourcen für die Voruntersuchungen |  | 1d | 2013-10-14 | 2013-10-14 | 7 | 0d | Management | 8h |
| 10 | 1.2.2 | Planen der Voruntersuchungen |  | 10d | 2013-10-15 | 2013-10-28 | 9 | 1217.75d | Fertigungsabteilung | 80h |
| 11 | 1.2.3 | Auswerten des Marktes |  | 10d | 2013-10-15 | 2013-10-28 | 9 | 1217.75d | Marketingabteilung | 80h |
| 12 | 1.2.4 | Analysieren der Konkurrenz |  | 5d | 2013-10-15 | 2013-10-21 | 9 | 0d | Marketingabteilung | 40h |
| 13 | 1.2.5 | **Analyse der technischen Machbarkeit** |  | 20d | 2013-10-22 | 2013-11-18 |  | 0d |  | 160h |
| 14 | 1.2.5.1 | Erstellen eines Produkts im Labormaßstab |  | 10d | 2013-10-22 | 2013-11-04 | 12 | 0d | Fertigungsabteilung | 80h |
| 15 | 1.2.5.2 | Bewerten des internen Produkts |  | 5d | 2013-11-05 | 2013-11-11 | 14 | 0d | Fertigungsabteilung | 40h |
| 16 | 1.2.5.3 | Ermitteln der Produktionsschritte, die für die Herstellung erforderlich sind |  | 5d | 2013-11-12 | 2013-11-18 | 15 | 0d | Fertigungsplaner | 40h |
| 17 | 1.2.6 | Beurteilen der Fertigungsmöglichkeiten |  | 20d | 2013-11-19 | 2013-12-16 | 16 | 0d | Fertigungsabteilung | 160h |
| 18 | 1.2.7 | Feststellen von Sicherheitsfragen |  | 10d | 2013-11-19 | 2013-12-02 | 17SS | 0d | Sicherheitsprüfer | 80h |
| 19 | 1.2.8 | Feststellen von Umweltfragen |  | 20d | 2013-11-19 | 2013-12-16 | 18SS | 0d | Fertigungsabteilung | 160h |
| 20 | 1.2.9 | Prüfen rechtlicher Fragen |  | 20d | 2013-11-19 | 2013-12-16 | 19SS | 0d | Rechtsabteilung | 160h |
| 21 | 1.2.10 | Klären der Finanzierung |  | 10d | 2013-12-17 | 2013-12-30 | 20, 17, 18, 19 | 0d | Buchhaltung | 80h |
| 22 | 1.2.11 | Entwickeln einer Risikoanalyse |  | 10d | 2013-12-31 | 2014-01-13 | 21 | 0d | Fertigungsabteilung | 80h |
| 23 | 1.2.12 | Erstellen eines ersten Planes für die Entwicklungsstufe |  | 10d | 2013-12-17 | 2013-12-30 | 21SS | 10d | Fertigungsabteilung | 80h |
| 24 | 1.2.13 | Treffen einer Entscheidung anhand der Ergebnisse der Voruntersuchungen |  | 2.5d | 2014-01-14 | 2014-01-16 | 22, 23 | 0d | Management | 20h |
| 25 | 1.2.14 | Entscheidungspunkt - Ja/Nein für Entwicklungsphase | milestone | 0d | 2014-01-16 | 2014-01-16 | 24 | 1160.25d | Management |  |

| ID | WBS | Task | Type | Duration | Start | Finish | Predecessors | Total slack | Free slack | Resources | Work |
| --- | --- | --- | --- | --- | --- | --- | --- | --- | --- | --- | --- |
| 26 | 1.3 | **Entwicklungsphase** |  | 397d | 2014-01-16 | 2015-07-27 |  | 0d |  |  | 4612h |
| 27 | 1.3.1 | Zuweisen von Ressourcen gemäß dem Plan für die Entwicklungsphase |  | 2d | 2014-01-16 | 2014-01-20 | 24 | 0d |  | Management | 16h |
| 28 | 1.3.2 | **Marktstudie** |  | 55d | 2014-01-20 | 2014-04-07 |  | 0d |  |  | 480h |
| 29 | 1.3.2.1 | Sammeln von Marktinformationen |  | 30d | 2014-01-20 | 2014-03-03 | 27 | 0d |  | Fertigungsabteilung | 240h |
| 30 | 1.3.2.2 | Festlegen und Ansprechen einer Kundentestgruppe |  | 5d | 2014-03-03 | 2014-03-10 | 29 | 10d |  | Marketingabteilung | 40h |
| 31 | 1.3.2.3 | Durchführen einer Wettbewerberanalyse |  | 15d | 2014-03-03 | 2014-03-24 | 29 | 0d |  | Marketingabteilung | 120h |
| 32 | 1.3.2.4 | Überarbeiten der Produktanforderungen |  | 10d | 2014-03-24 | 2014-04-07 | 30, 31 | 0d |  | Fertigungsabteilung | 80h |
| 33 | 1.3.3 | **Technische Bewertung des Produkts** |  | 320d | 2014-01-20 | 2015-04-13 |  | 8d |  |  | 2776h |
| 34 | 1.3.3.1 | Festlegen der Produkteigenschaften (Leistungskriterien) |  | 2d | 2014-01-20 | 2014-01-22 | 27 | 8d | 0d | Fertigungsabteilung | 16h |
| 35 | 1.3.3.2 | Definieren des Prozesses zur Mustererstellung |  | 10d | 2014-01-22 | 2014-02-05 | 34 | 8d | 0d | Fertigungsabteilung | 80h |
| 36 | 1.3.3.3 | Erstellen des Produktmusters |  | 25d | 2014-02-05 | 2014-03-12 | 35 | 8d | 0d | Fertigungsabteilung | 200h |
| 37 | 1.3.3.4 | Durchführen der internen Produktüberprüfung |  | 10d | 2014-03-12 | 2014-03-26 | 36 | 8d |  | Management | 80h |
| 38 | 1.3.3.5 | Dokumentieren der Patentanmeldung |  | 10d | 2014-01-22 | 2014-02-05 | 34 | 350.5d | 310.5d | Fertigungsabteilung | 80h |
| 39 | 1.3.3.6 | Durchführen der Marketing-/technischen Überprüfung |  | 184d | 2014-04-07 | 2014-12-19 | 37, 32 | 0d |  | Marketingabteilung | 1472h |
| 40 | 1.3.3.7 | Ändern der Vorgehensweise (sofern erforderlich) |  | 20d | 2014-12-19 | 2015-01-16 | 39 | 0d |  | Fertigungsabteilung | 160h |
| 41 | 1.3.3.8 | Anpassen des Prozesses zur Mustererstellung |  | 15d | 2015-01-16 | 2015-02-06 | 40 | 0d |  | Fertigungsplaner | 120h |
| 42 | 1.3.3.9 | Entwickeln eines Planes für das Testen des Produkts durch Kunden |  | 5d | 2015-02-06 | 2015-02-13 | 41 | 20.5d |  | Projektmanager | 40h |
| 43 | 1.3.3.10 | Herstellen eines Produkts für die Bewertung durch Kunden |  | 25.5d | 2015-02-06 | 2015-03-13 | 41 | 0d |  | Fertigungsabteilung | 204h |
| 44 | 1.3.3.11 | Prüfen des Fertigungsprozesses für die Vorserienfertigung |  | 20d | 2015-03-16 | 2015-04-10 | 43 | 0.5d |  | Fertigungsplaner | 160h |
| 45 | 1.3.3.12 | Durchführen der Kundenbewertungen für das Musterprodukt |  | 20.5d | 2015-03-16 | 2015-04-13 | 43, 42 | 0d |  | Fertigungsabteilung | 164h |
| 46 | 1.3.4 | **Konzeptbewertung** |  | 72.5d | 2015-04-13 | 2015-07-22 |  | 0d |  |  | 1320h |
| 47 | 1.3.4.1 | Durchführen der Marketing-/technischen Überprüfung |  | 2.5d | 2015-04-13 | 2015-04-15 | 45, 44 | 0d |  | Management | 20h |
| 48 | 1.3.4.2 | Vorbereiten des Entwurfs für die Vorserienfertigung |  | 20d | 2015-04-16 | 2015-05-13 | 47 | 0d |  | Fertigungsabteilung | 160h |
| 49 | 1.3.4.3 | Beurteilen der Option zur Auftragsfertigung |  | 20d | 2015-05-14 | 2015-06-10 | 48 | 795.75d |  | Rechtsabteilung | 160h |
| 50 | 1.3.4.4 | Auswerten der Gesetzes- und Patentbestimmungen |  | 20d | 2015-04-16 | 2015-05-13 | 47, 38 | 40d |  | Management | 160h |
| 51 | 1.3.4.5 | Überprüfen der Umweltschutzaspekte |  | 10d | 2015-05-14 | 2015-05-27 | 48 | 20d |  | Fertigungsabteilung | 80h |
| 52 | 1.3.4.6 | Prüfen der Produktsicherheit |  | 30d | 2015-04-16 | 2015-05-27 | 47 | 20d |  | Sicherheitsprüfer | 240h |
| 53 | 1.3.4.7 | Erarbeiten einer Vorgabe für den Produktzyklus |  | 30d | 2015-05-14 | 2015-06-24 | 48 | 0d |  | Projektmanager | 240h |
| 54 | 1.3.4.8 | Aktualisieren der Finanzanalyse |  | 10d | 2015-06-25 | 2015-07-08 | 53, 52, 51, 57 | 0d |  | Buchhaltung | 80h |
| 55 | 1.3.4.9 | Risikoanalyse |  | 10d | 2015-07-09 | 2015-07-22 | 50, 54, 52 | 0d |  | Fertigungsabteilung | 80h |
| 56 | 1.3.4.10 | Überprüfen der Voruntersuchungskriterien |  | 2.5d | 2015-07-09 | 2015-07-13 | 54 | 7.5d |  | Management | 20h |
| 57 | 1.3.4.11 | Entwickeln des Planes für die Pilotphase |  | 10d | 2015-04-16 | 2015-04-29 | 48SS | 40d |  | Fertigungsabteilung | 80h |
| 58 | 1.3.5 | Durchführen der Entwurfsphasenüberprüfung |  | 2.5d | 2015-07-23 | 2015-07-27 | 55, 56, 57 | 0d |  | Fertigungsabteilung | 20h |
| 59 | 1.3.6 | Entscheidungspunkt - Ja/Nein für Pilotphase | milestone | 0d | 2015-07-27 | 2015-07-27 | 58 | 0d |  | Management |  |

| ID | WBS | Task | Duration | Start | Finish | Predecessors | Total slack | Resources | Work |
| --- | --- | --- | --- | --- | --- | --- | --- | --- | --- |
| 60 | 1.4 | **Pilotphase** | 152.5d | 2015-07-27 | 2016-02-24 |  | 0d |  | 1948h |
| 61 | 1.4.1 | Zuordnen von Ressourcen für die Pilotphase | 1d | 2015-07-27 | 2015-07-28 | 58, 59 | 0d | Management; Projektmanager | 16h |
| 62 | 1.4.2 | Einholen der Kundenzusage, an den Vermarktungsversuchen teilzunehmen | 5d | 2015-07-28 | 2015-08-04 | 61 | 0d | Rechtsabteilung; Projektmanager | 80h |
| 63 | 1.4.3 | **Herstellung des Probeprodukts** | 85d | 2015-08-04 | 2015-12-01 |  | 0d |  | 1160h |
| 64 | 1.4.3.1 | Zeitliches Planen /Reservieren der Fertigungsstätte für das Probeprodukt | 5d | 2015-08-04 | 2015-08-11 | 62 | 0d | Projektmanager | 40h |
| 65 | 1.4.3.2 | Klären der Logistik für Vormaterial und Fertigprodukte | 10d | 2015-08-11 | 2015-08-25 | 64 | 0d | Fertigungsabteilung | 80h |
| 66 | 1.4.3.3 | Überarbeiten des Planes und der Anforderungen für das Probeprodukt | 10d | 2015-08-04 | 2015-08-18 | 62 | 5d | Fertigungsabteilung | 80h |
| 67 | 1.4.3.4 | Aufnahme der Fertigung des Probeprodukts | 30d | 2015-08-25 | 2015-10-06 | 65, 66 | 0d | Fertigungsabteilung | 240h |
| 68 | 1.4.3.5 | Überwachen des Probeeinsatzes beim Kunden | 20d | 2015-08-25 | 2015-09-22 | 67SS | 0d | Fertigungsabteilung | 160h |
| 69 | 1.4.3.6 | Auswerten der ersten Probeergebnisse | 20d | 2015-09-22 | 2015-10-20 | 68 | 0d | Fertigungsabteilung | 160h |
| 70 | 1.4.3.7 | Fortsetzen der Fertigung des Probeprodukts | 30d | 2015-10-20 | 2015-12-01 | 69 | 0d | Fertigungsabteilung | 240h |
| 71 | 1.4.3.8 | Abschließen der Überwachung des Probeeinsatzes beim Kunden | 20d | 2015-10-20 | 2015-11-17 | 70SS | 0d | Fertigungsabteilung | 160h |
| 72 | 1.4.4 | **Analyse der Probeeinsätze** | 71.5d | 2015-11-17 | 2016-02-24 |  | 0d |  | 692h |
| 73 | 1.4.4.1 | Bestätigen der Verkaufs- und Marketingstrategien | 10d | 2015-11-17 | 2015-12-01 | 71 | 0d | Marketingabteilung | 80h |
| 74 | 1.4.4.2 | Bestätigen der Produktsicherheit | 10d | 2015-11-17 | 2015-12-01 | 73SS | 0d | Sicherheitsprüfer | 80h |
| 75 | 1.4.4.3 | Überarbeiten des Fertigungsprozesses | 15d | 2015-12-01 | 2015-12-22 | 73, 74 | 0d | Fertigungsplaner | 120h |
| 76 | 1.4.4.4 | Entwickeln des Vermarktungsplanes | 30d | 2015-12-22 | 2016-02-02 | 75 | 0d | Fertigungsabteilung | 240h |
| 77 | 1.4.4.5 | Überprüfen der Finanzen | 5d | 2016-02-02 | 2016-02-09 | 76 | 5d | Buchhaltung | 40h |
| 78 | 1.4.4.6 | Überprüfen von patentrechtlichen und gesetzlichen Fragen | 10d | 2016-02-02 | 2016-02-16 | 76 | 0d | Rechtsabteilung | 80h |
| 79 | 1.4.4.7 | Bestimmen der Zuständigkeiten und Ressourcen für die Vermarktung | 4d | 2016-02-16 | 2016-02-22 | 77, 78 | 0d | Management | 32h |
| 80 | 1.4.4.8 | Pilotphasenauswertung und Vermarktungsentscheidung | 2.5d | 2016-02-22 | 2016-02-24 | 79 | 0d | Management | 20h |
| 81 | 1.5 | **Vermarktungsstufe** | 380.25d | 2016-02-25 | 2017-08-10 |  | 0d |  | 3168h |
| 82 | 1.5.1 | **Produktfertigung und -überwachung** | 326d | 2016-02-25 | 2017-05-25 |  | 0d |  | 2608h |
| 83 | 1.5.1.1 | Bestätigen der Produktbeschreibung | 6d | 2016-02-25 | 2016-03-03 | 80 | 0d | Fertigungsabteilung | 48h |
| 84 | 1.5.1.2 | Abnehmen der Produktbeschreibung durch den Kunden | 20d | 2016-03-04 | 2016-03-31 | 83 | 0d | Fertigungsabteilung | 160h |
| 85 | 1.5.1.3 | Festlegen der Anforderungen für den Fertigungsprozess | 20d | 2016-04-01 | 2016-04-28 | 84 | 0d | Fertigungsplaner | 160h |
| 86 | 1.5.1.4 | Entwerfen und Bestellen von neuer Ausrüstung | 60d | 2016-04-29 | 2016-07-21 | 85 | 0d | Fertigungsabteilung | 480h |
| 87 | 1.5.1.5 | Installieren und Testen der neuen oder geänderten Ausrüstung | 60d | 2016-07-22 | 2016-10-13 | 86 | 0d | Fertigungsabteilung | 480h |
| 88 | 1.5.1.6 | Bestätigen der Fertigungsmöglichkeiten | 10d | 2016-10-14 | 2016-10-27 | 87 | 0d | Fertigungsingenieur | 80h |
| 89 | 1.5.1.7 | Entwickeln und Überarbeiten des vorläufigen Fertigungsplanes | 10d | 2016-10-28 | 2016-11-10 | 88 | 0d | Fertigungsabteilung | 80h |
| 90 | 1.5.1.8 | Aufnahme der Fertigung des Produkts in marktüblichen Mengen | 80d | 2016-11-11 | 2017-03-02 | 89 | 0d | Fertigungsabteilung | 640h |
| 91 | 1.5.1.9 | Überwachen der Akzeptanz beim Kunden | 60d | 2017-03-03 | 2017-05-25 | 90 | 0d | Fertigungsabteilung | 480h |

| ID | WBS | Task | Duration | Start | Finish | Predecessors | Total slack | Free slack | Resources | Work |
| --- | --- | --- | --- | --- | --- | --- | --- | --- | --- | --- |
| 92 | 1.5.2 | **Vermarktungsanalyse** | 114.25d | 2017-03-03 | 2017-08-10 |  | 0d |  |  | 560h |
| 93 | 1.5.2.1 | Durchführen interner Produktprüfungen | 15d | 2017-03-03 | 2017-03-23 | 90 | 45d |  | Fertigungsabteilung | 120h |
| 94 | 1.5.2.2 | Auswerten der Ergebnisse zum Fertigungsdurchsatz | 10.5d | 2017-05-26 | 2017-06-23 | 91, 93 | 0d |  | Managemen | 84h |
| 95 | 1.5.2.3 | Ermitteln der langfristigen Fertigungsanforderungen | 30d | 2017-06-23 | 2017-08-04 | 94 | 0d |  | Fertigungsplaner | 240h |
| 96 | 1.5.2.4 | Neukalkulieren der Produktkosten | 10.5d | 2017-06-23 | 2017-07-07 | 94 | 19.5d |  | Fertigungsabteilung | 84h |
| 97 | 1.5.2.5 | Treffen der Entscheidung, die Produktvermarktung fortzusetzen | 4d | 2017-08-04 | 2017-08-10 | 96, 95 | 0d |  | Management | 32h |
| 98 | 1.6 | **Auswertung nach der Produkteinführung** | 230.5d | 2017-08-10 | 2018-06-28 |  | 0d |  |  | 3284h |
| 99 | 1.6.1 | Ermitteln, ob das Produkt den Kosten-/Leistungserwartungen der Kunden entspricht | 120d | 2017-08-10 | 2018-01-25 | 97 | 0d |  | Management | 960h |
| 100 | 1.6.2 | Ermitteln, ob die Verkaufszahlen den eigenen Erwartungen entsprechen | 120d | 2017-08-10 | 2018-01-25 | 99SS | 50.5d | 0d | Marketingabteilung | 960h |
| 101 | 1.6.3 | Produktwettbewerbsfähigkeit gegenüber Konkurrenzprodukten ermitteln | 60d | 2018-01-25 | 2018-04-19 | 100 | 50.5d |  | Marketingabteilung | 480h |
| 102 | 1.6.4 | Auswerten des Fertigungsprozesses bezüglich Stabilität und Kosteneffizienz | 80d | 2018-01-25 | 2018-05-17 | 99 | 0d |  | Fertigungsingenieur | 640h |
| 103 | 1.6.5 | Ökonomischen Bedingungen überprüfen | 15d | 2018-05-17 | 2018-06-07 | 102 | 0d |  | Marketingabteilung | 120h |
| 104 | 1.6.6 | Untersuchen der Möglichkeiten, das Produkt oder die Produktlinie zu erweitern | 15.5d | 2018-06-07 | 2018-06-28 | 103 | 0d |  | Marketingabteilung | 124h |
